# Flash-SDAI

How a schedule from MS Project changed from version to version. A marks actual dates.

## Version 1 (saved 2016-05-06)

Note of the change: Add Project Plan and remove Architecture.docx from this folder

| ID | WBS | Task | Duration | Start | Finish | Predecessors | Complete | Total float | Constraint |
| --- | --- | --- | --- | --- | --- | --- | --- | --- | --- |
| 1 | 1 | **Initiating** | 2d | 2016-04-18 08:00 A | 2016-04-19 17:00 A |  | 100% |  |  |
| 2 |  | Define roles in team | 1d | 2016-04-18 08:00 A | 2016-04-18 17:00 A |  | 100% |  |  |
| 3 |  | Roles in team defined | 0d | 2016-04-18 17:00 A | 2016-04-18 17:00 A | 2 | 100% |  |  |
| 4 |  | Kickoff meeting with customers | 1d | 2016-04-19 08:00 A | 2016-04-19 17:00 A | 3 | 100% |  |  |
| 5 |  | Kickoff meeting completed | 0d | 2016-04-18 17:00 A | 2016-04-18 17:00 A | 3 | 100% |  |  |
| 6 | 2 | **Planning** | 3d | 2016-04-19 08:00 A | 2016-04-21 17:00 A |  | 100% |  |  |
| 7 |  | Prepare draft schedule | 3d | 2016-04-19 08:00 A | 2016-04-21 17:00 A | 2, 5 | 100% |  |  |
| 8 |  | Gantt chart completed | 0d | 2016-04-21 17:00 A | 2016-04-21 17:00 A | 7 | 100% |  |  |
| 9 | 3 | **Executing** | 44.12d | 2016-04-16 08:00 A | 2016-06-07 09:00 |  | 13% | 0d |  |
| 10 |  | Prepare Requirements document | 1w | 2016-04-22 08:00 A | 2016-04-29 17:00 A | 5, 7 | 100% |  |  |
| 11 |  | Prepare Architecture document | 2w | 2016-04-29 11:12 | 2016-05-13 11:12 | 10FS-1% |  | 0.93d |  |
| 12 |  | Develop source code for the project | 2w | 2016-05-12 09:36 | 2016-05-26 09:36 | 10FS-1%, 11FS-1% |  | 0.93d |  |
| 13 |  | Prepare Test Plan document | 2w | 2016-04-29 11:12 | 2016-05-13 11:12 | 10FS-1% |  | 11.72d |  |
| 14 |  | Requirements document completed | 0d | 2016-04-29 17:00 | 2016-04-29 17:00 | 10 |  | 32.12d |  |
| 15 |  | Architecture document completed | 0d | 2016-05-13 11:12 | 2016-05-13 11:12 | 11 |  | 20.73d |  |
| 16 |  | Development of application completed | 0d | 2016-05-26 09:36 | 2016-05-26 09:36 | 12 |  | 0.93d |  |
| 17 |  | Test plan completed | 0d | 2016-05-13 11:12 | 2016-05-13 11:12 | 13 |  | 11.72d |  |
| 18 |  | Test the created solution according to Test Plan document | 3d | 2016-05-26 09:36 | 2016-05-30 09:36 | 16, 17 |  | 0.93d |  |
| 19 |  | Prepare Test Summary and Test Report Documents | 1w | 2016-05-30 09:36 | 2016-06-06 09:36 | 18 |  | 0.93d |  |
| 20 |  | Test Symmary and Test Report Documents completed | 0d | 2016-04-16 08:00 | 2016-04-16 08:00 |  |  | 44.12d |  |
| 21 | 3.12 | **Hold Meetings** | 44.12d | 2016-04-16 08:00 A | 2016-06-07 09:00 |  | 40% | 0d |  |
| 22 |  | Hold Meetings 1 | 1h | 2016-04-16 08:00 A | 2016-04-16 09:00 A |  | 100% |  | finish no earlier than 2016-04-16 17:00 |
| 23 |  | Hold Meetings 2 | 1h | 2016-04-19 08:00 A | 2016-04-19 09:00 A |  | 100% |  | start no earlier than 2016-04-19 08:00 |
| 24 |  | Hold Meetings 3 | 0h | 2016-04-23 08:00 A | 2016-04-23 08:00 A |  | 100% |  | finish no earlier than 2016-04-23 17:00 |
| 25 |  | Hold Meetings 4 | 1h | 2016-04-26 08:00 A | 2016-04-26 09:00 A |  | 100% |  | start no earlier than 2016-04-26 08:00 |
| 26 |  | Hold Meetings 5 | 1h | 2016-04-30 08:00 A | 2016-04-30 09:00 A |  | 100% |  | start no earlier than 2016-04-30 08:00 |
| 27 |  | Hold Meetings 6 | 1h | 2016-05-03 08:00 A | 2016-05-03 09:00 A |  | 100% |  | start no earlier than 2016-05-03 08:00 |
| 28 |  | Hold Meetings 7 | 1h | 2016-05-07 08:00 A | 2016-05-07 09:00 A |  | 100% |  | start no earlier than 2016-05-07 08:00 |
| 29 |  | Hold Meetings 8 | 1h | 2016-05-10 08:00 | 2016-05-10 09:00 |  |  | 24d | start no earlier than 2016-05-10 08:00 |
| 30 |  | Hold Meetings 9 | 1h | 2016-05-14 08:00 | 2016-05-14 09:00 |  |  | 20d | start no earlier than 2016-05-14 08:00 |
| 31 |  | Hold Meetings 10 | 1h | 2016-05-17 08:00 | 2016-05-17 09:00 |  |  | 18d | start no earlier than 2016-05-17 08:00 |
| 32 |  | Hold Meetings 11 | 1h | 2016-05-21 08:00 | 2016-05-21 09:00 |  |  | 14d | start no earlier than 2016-05-21 08:00 |
| 33 |  | Hold Meetings 12 | 1h | 2016-05-24 08:00 | 2016-05-24 09:00 |  |  | 12d | start no earlier than 2016-05-24 08:00 |
| 34 |  | Hold Meetings 13 | 1h | 2016-05-28 08:00 | 2016-05-28 09:00 |  |  | 8d | start no earlier than 2016-05-28 08:00 |
| 35 |  | Hold Meetings 14 | 1h | 2016-05-31 08:00 | 2016-05-31 09:00 |  |  | 6d | start no earlier than 2016-05-31 08:00 |
| 36 |  | Hold Meetings 15 | 1h | 2016-06-04 08:00 | 2016-06-04 09:00 |  |  | 2d | start no earlier than 2016-06-04 08:00 |
| 37 |  | Hold Meetings 16 | 1h | 2016-06-07 08:00 | 2016-06-07 09:00 |  |  | 0d | start no earlier than 2016-06-07 08:00 |
| 38 | 4 | **Closing** | 0d | 2016-06-06 09:36 | 2016-06-06 09:36 |  |  | 0.93d |  |
| 39 |  | Project completed | 0d | 2016-06-06 09:36 | 2016-06-06 09:36 | 14, 15, 16, 19 |  | 0.93d |  |

## Version 2 (saved 2016-05-06)

Note of the change: Merge branch 'master' of github.com:Flash-SDAI/Flash

Last finish stays 2016-06-07.

Changed:

| ID | Task | Start | Finish | Total float | Predecessors | Other |
| --- | --- | --- | --- | --- | --- | --- |
| 2 | Define roles in team |  |  |  |  | resources Deyvid Radenkov; Gergana Kutleva; Nikolay Radkov; Radoslav Gavrailov; Stoyan Yanev → David Radenkov; Gergana Kutleva; Nikolay Radkov; Radoslav Gavrailov; Stoyan Yanev |
| 4 | Kickoff meeting with customers |  |  |  |  | resources Deyvid Radenkov; Gergana Kutleva; Nikolay Radkov; Radoslav Gavrailov; Stoyan Yanev → David Radenkov; Gergana Kutleva; Nikolay Radkov; Radoslav Gavrailov; Stoyan Yanev |
| 13 | Prepare Test Plan document |  |  |  |  | resources Deyvid Radenkov → David Radenkov |
| 18 | Test the created solution according to Test Plan document |  |  |  |  | resources Deyvid Radenkov → David Radenkov |
| 19 | Prepare Test Summary and Test Report Documents |  |  |  |  | resources Deyvid Radenkov → David Radenkov |
| 20 | Test Symmary and Test Report Documents completed | 2016-04-16 08:00 → 2016-06-06 09:36 (+51d) | 2016-04-16 08:00 → 2016-06-06 09:36 (+51d) | 44.12d → 0.93d | none → 19 |  |

## Version 3 (saved 2016-06-06)

Note of the change: Project plan completed

Last finish stays 2016-06-07. Complete tasks 14 → 33.

Changed:

| ID | Task | Start | Finish | Complete | Total float |
| --- | --- | --- | --- | --- | --- |
| 9 | **Executing** |  |  | 13% → 99% |  |
| 11 | Prepare Architecture document | 2016-04-29 11:12 A | 2016-05-13 11:12 A | 0% → 100% | 0.93d → none |
| 12 | Develop source code for the project | 2016-05-12 09:36 A | 2016-05-26 09:36 A | 0% → 100% | 0.93d → none |
| 13 | Prepare Test Plan document | 2016-04-29 11:12 A | 2016-05-13 11:12 A | 0% → 100% | 11.72d → none |
| 14 | Requirements document completed | 2016-04-29 17:00 A | 2016-04-29 17:00 A | 0% → 100% | 32.12d → none |
| 15 | Architecture document completed | 2016-05-13 11:12 A | 2016-05-13 11:12 A | 0% → 100% | 20.73d → none |
| 16 | Development of application completed | 2016-05-26 09:36 A | 2016-05-26 09:36 A | 0% → 100% | 0.93d → none |
| 17 | Test plan completed | 2016-05-13 11:12 A | 2016-05-13 11:12 A | 0% → 100% | 11.72d → none |
| 18 | Test the created solution according to Test Plan document | 2016-05-26 09:36 A | 2016-05-30 09:36 A | 0% → 100% | 0.93d → none |
| 19 | Prepare Test Summary and Test Report Documents | 2016-05-30 09:36 A | 2016-06-06 09:36 A | 0% → 100% | 0.93d → none |
| 20 | Test Symmary and Test Report Documents completed | 2016-06-06 09:36 A | 2016-06-06 09:36 A | 0% → 100% | 0.93d → none |
| 21 | **Hold Meetings** |  |  | 40% → 93% |  |
| 29 | Hold Meetings 8 | 2016-05-10 08:00 A | 2016-05-10 09:00 A | 0% → 100% | 24d → none |
| 30 | Hold Meetings 9 | 2016-05-14 08:00 A | 2016-05-14 09:00 A | 0% → 100% | 20d → none |
| 31 | Hold Meetings 10 | 2016-05-17 08:00 A | 2016-05-17 09:00 A | 0% → 100% | 18d → none |
| 32 | Hold Meetings 11 | 2016-05-21 08:00 A | 2016-05-21 09:00 A | 0% → 100% | 14d → none |
| 33 | Hold Meetings 12 | 2016-05-24 08:00 A | 2016-05-24 09:00 A | 0% → 100% | 12d → none |
| 34 | Hold Meetings 13 | 2016-05-28 08:00 A | 2016-05-28 09:00 A | 0% → 100% | 8d → none |
| 35 | Hold Meetings 14 | 2016-05-31 08:00 A | 2016-05-31 09:00 A | 0% → 100% | 6d → none |
| 36 | Hold Meetings 15 | 2016-06-04 08:00 A | 2016-06-04 09:00 A | 0% → 100% | 2d → none |
| 38 | **Closing** | 2016-06-06 09:36 A | 2016-06-06 09:36 A | 0% → 100% | 0.93d → none |
| 39 | Project completed | 2016-06-06 09:36 A | 2016-06-06 09:36 A | 0% → 100% | 0.93d → none |
